# SISA Mobile - Gantt

Schedule from MS Project, 2014-04-24 to 2014-11-25.

## Calendars

- Standard: Mon-Fri 08:00-12:00, 13:00-17:00; Sat 09:00-17:00; Sun off.

## Resources

| Resource |
| --- |
| Santiago Panizza |
| Leonardo Oneto |
| Sebastian Palotte |
| Lucas Roca |
| Nicolas Chaikh |

## Schedule

| ID | WBS | Task | Type | Duration | Start | Finish | Predecessors | Total slack | Free slack | Constraint | Resources | Work |
| --- | --- | --- | --- | --- | --- | --- | --- | --- | --- | --- | --- | --- |
| 1 | 1 | **SISA Mobile** |  | 185d | 2014-04-24 | 2014-11-25 |  | 0d |  |  |  | 3374.8h |
| 2 | 1.1 | **Documento de gestión de proyecto** |  | 55d | 2014-04-24 | 2014-06-26 |  |  |  |  |  | 448h |
| 3 | 1.1.1 | Acta del proyecto |  | 16d | 2014-04-24 | 2014-05-12 |  | 39d |  |  | Santiago Panizza [50%] | 64h |
| 4 | 1.1.2 | Matriz de roles y responsabilidades |  | 11d | 2014-04-24 | 2014-05-06 |  | 44d |  |  | Nicolas Chaikh [50%] | 44h |
| 5 | 1.1.3 | Matriz de comunicaciones |  | 11d | 2014-04-24 | 2014-05-06 |  | 44d |  |  | Nicolas Chaikh [50%] | 44h |
| 6 | 1.1.4 | Matriz de habilidades y competencias |  | 11d | 2014-04-24 | 2014-05-06 |  | 44d |  |  | Lucas Roca | 88h |
| 7 | 1.1.5 | WBS |  | 10d | 2014-04-24 | 2014-05-05 |  | 29d | 0d |  | Santiago Panizza [50%] | 40h |
| 8 | 1.1.6 | Gantt del proyecto |  | 10d | 2014-05-13 | 2014-05-23 | 7 | 29d |  |  | Santiago Panizza | 80h |
| 9 | 1.1.7 | Informe de análisis de riesgos |  | 11d | 2014-05-07 | 2014-05-19 |  | 33d |  |  | Lucas Roca | 88h |
| 10 | 1.1.8 | Validar documentación de gestión | milestone, manual | 0d | 2014-06-26 | 2014-06-26 |  |  |  |  |  |  |
| 11 | 1.2 | **Documento de análisis** |  | 30d | 2014-05-05 | 2014-06-07 |  | 5d | 0d |  |  | 160h |
| 12 | 1.2.1 | Informe de requerimientos |  | 10d | 2014-05-28 | 2014-06-07 |  | 5d |  |  | Sebastian Palotte [50%] | 40h |
| 13 | 1.2.2 | Documento de requerimientos |  | 30d | 2014-05-05 | 2014-06-07 |  | 5d |  | start no earlier than 2014-05-04 | Sebastian Palotte [50%] | 120h |
| 14 | 1.3 | **Documento de arquitectura** |  | 5d | 2014-05-05 | 2014-05-09 |  | 171d |  |  |  | 39.6h |
| 15 | 1.3.1 | **Informe de investigación de tecnología** |  | 5d | 2014-05-05 | 2014-05-09 |  | 171d |  |  |  | 39.6h |
| 16 | 1.3.1.1 | Informe Android |  | 5d | 2014-05-05 | 2014-05-09 |  | 171d |  | start no earlier than 2014-05-05 | Leonardo Oneto [33%] | 13.2h |
| 17 | 1.3.1.2 | Informe Windows Phone |  | 5d | 2014-05-05 | 2014-05-09 |  | 171d |  | start no earlier than 2014-05-05 | Leonardo Oneto [33%] | 13.2h |
| 18 | 1.3.1.3 | Informe PhoneGap |  | 5d | 2014-05-05 | 2014-05-09 |  | 171d |  | start no earlier than 2014-05-05 | Leonardo Oneto [33%] | 13.2h |
| 19 | 1.4 | **Documentación de casos de uso** |  | 24d | 2014-06-09 | 2014-07-05 |  | 5d | 0d |  |  | 320h |
| 20 | 1.4.1 | **Diagramas y especificacion de casos de uso** |  | 20d | 2014-06-09 | 2014-07-01 |  | 5d | 0d |  |  | 288h |
| 21 | 1.4.1.1 | Autenticación de usuario |  | 20d | 2014-06-09 | 2014-07-01 | 11 | 5d | 0d | start no earlier than 2014-06-06 | Santiago Panizza [15%] | 24h |
| 22 | 1.4.1.2 | Consulta "Establecimientos" |  | 20d | 2014-06-09 | 2014-07-01 | 11 | 5d | 0d | start no earlier than 2014-06-06 | Santiago Panizza [15%] | 24h |
| 23 | 1.4.1.3 | Modificación "Camas" |  | 20d | 2014-06-09 | 2014-07-01 | 11 | 5d | 0d | start no earlier than 2014-06-06 | Santiago Panizza [15%] | 24h |
| 24 | 1.4.1.4 | Consulta "Noticias" |  | 20d | 2014-06-09 | 2014-07-01 | 11 | 5d | 0d | start no earlier than 2014-06-06 | Santiago Panizza [15%] | 24h |
| 25 | 1.4.1.5 | Consulta "Profesionales" |  | 20d | 2014-06-09 | 2014-07-01 | 11 | 5d | 0d | start no earlier than 2014-06-06 | Santiago Panizza [15%] | 24h |
| 26 | 1.4.1.6 | Consulta "Georefes" |  | 20d | 2014-06-09 | 2014-07-01 | 11 | 9d |  | start no earlier than 2014-06-09 | Santiago Panizza [15%] | 24h |
| 27 | 1.4.1.7 | Consulta "Ministerios" |  | 20d | 2014-06-09 | 2014-07-01 | 11 | 5d | 0d | start no earlier than 2014-06-06 | Nicolas Chaikh [15%] | 24h |
| 28 | 1.4.1.8 | Consulta "Instituciones Formadoras" |  | 20d | 2014-06-09 | 2014-07-01 | 11 | 5d | 0d | start no earlier than 2014-06-06 | Nicolas Chaikh [15%] | 24h |
| 29 | 1.4.1.9 | Consulta "Farmacias" |  | 20d | 2014-06-09 | 2014-07-01 | 11 | 5d | 0d | start no earlier than 2014-06-06 | Nicolas Chaikh [15%] | 24h |
| 30 | 1.4.1.10 | Consulta "Drogueria" |  | 20d | 2014-06-09 | 2014-07-01 | 11 | 9d |  | start no earlier than 2014-06-09 | Nicolas Chaikh [15%] | 24h |
| 31 | 1.4.1.11 | Consulta "Autoridades y referentes" |  | 20d | 2014-06-09 | 2014-07-01 | 11 | 5d | 0d | start no earlier than 2014-06-06 | Nicolas Chaikh [15%] | 24h |
| 32 | 1.4.1.12 | Consulta "Ciudadano" |  | 20d | 2014-06-09 | 2014-07-01 | 11 | 5d | 0d | start no earlier than 2014-06-06 | Nicolas Chaikh [15%] | 24h |
| 33 | 1.4.2 | Matriz trazabilidad de casos de uso |  | 4d | 2014-07-02 | 2014-07-05 | 21, 22, 23, 24, 25, 27, 28, 29, 31, 32, 13 | 5d | 0d |  | Sebastian Palotte | 32h |

| ID | WBS | Task | Type | Duration | Start | Finish | Predecessors | Total slack | Free slack | Constraint | Resources | Work |
| --- | --- | --- | --- | --- | --- | --- | --- | --- | --- | --- | --- | --- |
| 34 | 1.5 | **Documento de Diseño** |  | 37d | 2014-06-09 | 2014-07-21 |  | 14d |  |  |  | 200h |
| 35 | 1.5.1 | Diagrama de despliegue |  | 2d | 2014-06-09 | 2014-06-10 | 11 | 144d |  |  | Sebastian Palotte | 16h |
| 36 | 1.5.2 | Diagrama de clases |  | 15d | 2014-06-09 | 2014-06-25 | 11 | 14d | 9d |  | Lucas Roca [25%] | 30h |
| 37 | 1.5.3 | Diagrama de componentes |  | 15d | 2014-06-09 | 2014-06-25 | 11 | 14d | 9d |  | Lucas Roca [25%] | 30h |
| 38 | 1.5.4 | Diagramas de actividades |  | 15d | 2014-06-09 | 2014-06-25 | 11 | 131d |  |  | Lucas Roca [25%] | 30h |
| 39 | 1.5.5 | Diagramas de secuencias |  | 15d | 2014-06-09 | 2014-06-25 | 11 | 131d |  |  | Lucas Roca [25%] | 30h |
| 40 | 1.5.6 | **Prototipo de diseño grafico** |  | 13d | 2014-07-07 | 2014-07-21 |  | 5d |  |  |  | 64h |
| 41 | 1.5.6.1 | Desarrollar el prototipo |  | 5d | 2014-07-07 | 2014-07-11 | 37, 33 | 114d | 0d |  | Nicolas Chaikh | 40h |
| 42 | 1.5.6.2 | Revisión SISA | milestone, manual | 0d | 2014-07-12 | 2014-07-12 | 41 |  |  |  |  |  |
| 43 | 1.5.6.3 | Aprobación SISA | milestone, manual | 0d | 2014-07-18 | 2014-07-18 | 42 |  |  |  |  |  |
| 44 | 1.5.6.4 | Correcciones del prototipo |  | 3d | 2014-07-18 | 2014-07-21 | 43 | 109d |  |  | Nicolas Chaikh | 24h |
| 45 | 1.6 | **Plan de pruebas** |  | 10d | 2014-07-02 | 2014-07-12 |  | 116d |  |  |  | 72h |
| 46 | 1.6.1 | Pruebas UAT |  | 8d | 2014-07-02 | 2014-07-10 | 20, 13 | 118d |  |  | Santiago Panizza [50%] | 32h |
| 47 | 1.6.2 | Pruebas funcionales |  | 10d | 2014-07-02 | 2014-07-12 | 20, 13 | 116d |  | start no earlier than 2014-06-21 | Santiago Panizza [50%] | 40h |
| 48 | 1.7 | **Construcción** |  | 116d | 2014-07-07 | 2014-11-18 | 19 | 5d |  |  |  | 1991.2h |
| 49 | 1.7.1 | Documento de configuración de entorno de desarrollo |  | 12d | 2014-07-07 | 2014-07-19 | 12 | 106d | 0d |  | Leonardo Oneto [50%] | 48h |
| 50 | 1.7.2 | Crear ambiente de desarrollo |  | 4d | 2014-07-21 | 2014-07-24 | 49 | 106d |  |  | Leonardo Oneto [50%] | 16h |
| 51 | 1.7.3 | **Nucleo de la aplicación** |  | 37d | 2014-07-07 | 2014-08-18 |  | 5d |  |  |  | 375.2h |
| 52 | 1.7.3.1 | **Desarrollar Nucleo de la aplicación** |  | 23d | 2014-07-07 | 2014-08-01 |  | 5d | 0d |  |  | 263.2h |
| 53 | 1.7.3.1.1 | Desarrollar servidor dummy |  | 8d | 2014-07-07 | 2014-07-15 | 37, 36 | 5d | 0d |  | Leonardo Oneto [50%] | 32h |
| 54 | 1.7.3.1.2 | Desarrollar conexión con web servicies |  | 15d | 2014-07-16 | 2014-08-01 | 53 | 5d |  |  | Leonardo Oneto [50%] | 60h |
| 55 | 1.7.3.1.3 | Desarrollar geolocalización |  | 15d | 2014-07-16 | 2014-08-01 | 53 | 5d |  |  | Santiago Panizza [50%] | 60h |
| 56 | 1.7.3.1.4 | Desarrollar manejo de errores |  | 8d | 2014-07-16 | 2014-07-24 | 53 | 12d |  |  | Santiago Panizza [50%] | 32h |
| 57 | 1.7.3.1.5 | Desarrollar nevegación interfaz gráfica |  | 10d | 2014-07-16 | 2014-07-26 | 53 | 10d |  |  | Sebastian Palotte [33%] | 26.4h |
| 58 | 1.7.3.1.6 | Desarrollar validaciones |  | 10d | 2014-07-16 | 2014-07-26 | 53 | 10d |  |  | Sebastian Palotte [33%] | 26.4h |
| 59 | 1.7.3.1.7 | Desarrollar autenticación |  | 10d | 2014-07-16 | 2014-07-26 | 53 | 10d |  |  | Sebastian Palotte [33%] | 26.4h |
| 60 | 1.7.3.2 | Fase 1 de pruebas |  | 4d | 2014-08-02 | 2014-08-06 | 52 | 85d | 0d |  | Lucas Roca | 32h |
| 61 | 1.7.3.3 | Fase 1 de corrección |  | 10d | 2014-08-07 | 2014-08-18 | 60 | 85d |  |  | Leonardo Oneto | 80h |

| ID | WBS | Task | Duration | Start | Finish | Predecessors | Total slack | Free slack | Constraint | Resources | Work |
| --- | --- | --- | --- | --- | --- | --- | --- | --- | --- | --- | --- |
| 62 | 1.7.4 | **Prototipo Funcional PF01** | 44d | 2014-07-07 | 2014-08-26 |  | 5d | 0d |  |  | 392h |
| 63 | 1.7.4.1 | **Modificación "Camas"** | 30d | 2014-07-07 | 2014-08-09 |  | 19d |  |  |  | 224h |
| 64 | 1.7.4.1.1 | Desarrollo webservice modificación "Camas" | 15d | 2014-07-07 | 2014-07-23 |  | 28d | 0d |  | Lucas Roca | 120h |
| 65 | 1.7.4.1.2 | Pruebas webservice modificación"Camas" | 2d | 2014-07-24 | 2014-07-25 | 64 | 28d | 0d |  | Nicolas Chaikh | 16h |
| 66 | 1.7.4.1.3 | Corrección webservice modificación "Camas" | 4d | 2014-07-26 | 2014-07-30 | 65 | 28d | 21d | start no earlier than 2014-06-27 | Lucas Roca | 32h |
| 67 | 1.7.4.1.4 | Desarrollo GUI | 5d | 2014-08-02 | 2014-08-07 | 52 | 19d | 0d |  | Nicolas Chaikh | 40h |
| 68 | 1.7.4.1.5 | Implementación | 2d | 2014-08-08 | 2014-08-09 | 67 | 19d |  |  | Lucas Roca | 16h |
| 69 | 1.7.4.2 | **Consulta "Establecimientos"** | 21d | 2014-08-02 | 2014-08-26 |  | 5d |  |  |  | 168h |
| 70 | 1.7.4.2.1 | Desarrollo módulo "Establecimientos" | 12d | 2014-08-02 | 2014-08-15 | 52 | 5d | 0d |  | Santiago Panizza | 96h |
| 71 | 1.7.4.2.2 | Pruebas módulo "Establecimientos" | 2d | 2014-08-16 | 2014-08-18 | 70 | 5d | 0d | start no earlier than 2014-06-23 | Nicolas Chaikh | 16h |
| 72 | 1.7.4.2.3 | Corrección módulo "Establecimientos" | 5d | 2014-08-19 | 2014-08-23 | 71 | 5d | 0d |  | Santiago Panizza | 40h |
| 73 | 1.7.4.2.4 | Implementación | 2d | 2014-08-25 | 2014-08-26 | 72 | 5d |  |  | Lucas Roca | 16h |
| 74 | 1.7.5 | **Prototipo Funcional PF02** | 23d | 2014-08-27 | 2014-09-22 |  | 5d | 0d |  |  | 312h |
| 75 | 1.7.5.1 | **Consulta "Ciudadano"** | 23d | 2014-08-27 | 2014-09-22 |  | 5d |  |  |  | 184h |
| 76 | 1.7.5.1.1 | Desarrollo módulo "Ciudadano" | 10d | 2014-08-27 | 2014-09-06 | 52, 62 | 5d | 0d |  | Leonardo Oneto | 80h |
| 77 | 1.7.5.1.2 | Pruebas módulo "Ciudadano" | 2d | 2014-09-08 | 2014-09-09 | 76 | 5d | 0d |  | Nicolas Chaikh | 16h |
| 78 | 1.7.5.1.3 | Correcciones módulo "Ciudadano" | 4d | 2014-09-10 | 2014-09-13 | 77 | 5d | 0d |  | Leonardo Oneto | 32h |
| 79 | 1.7.5.1.4 | Desarrollo GUI | 5d | 2014-09-15 | 2014-09-19 | 78 | 5d | 0d |  | Nicolas Chaikh | 40h |
| 80 | 1.7.5.1.5 | Implementación | 2d | 2014-09-20 | 2014-09-22 | 79 | 5d |  |  | Lucas Roca | 16h |
| 81 | 1.7.5.2 | **Consulta "Georefes"** | 16d | 2014-08-27 | 2014-09-13 |  | 12d |  |  |  | 128h |
| 82 | 1.7.5.2.1 | Desarrollo módulo "Georefes" | 8d | 2014-08-27 | 2014-09-04 | 52, 62 | 12d | 0d |  | Sebastian Palotte | 64h |
| 83 | 1.7.5.2.2 | Puebas módulo "Georefes" | 2d | 2014-09-05 | 2014-09-06 | 82 | 12d | 0d |  | Nicolas Chaikh | 16h |
| 84 | 1.7.5.2.3 | Corrección módulo "Georefes" | 4d | 2014-09-08 | 2014-09-11 | 83 | 12d | 0d |  | Sebastian Palotte | 32h |
| 85 | 1.7.5.2.4 | Implementación | 2d | 2014-09-12 | 2014-09-13 | 84 | 12d |  |  | Lucas Roca | 16h |

| ID | WBS | Task | Duration | Start | Finish | Predecessors | Total slack | Free slack | Resources | Work |
| --- | --- | --- | --- | --- | --- | --- | --- | --- | --- | --- |
| 86 | 1.7.6 | **Prototipo Funcional PF03** | 26d | 2014-09-23 | 2014-10-22 |  | 4d | 0d |  | 384h |
| 87 | 1.7.6.1 | **Consulta “Profesionales”** | 22d | 2014-09-23 | 2014-10-17 |  | 8d |  |  | 128h |
| 88 | 1.7.6.1.1 | Desarrollo módulo "Profesionales" | 8d | 2014-09-23 | 2014-10-01 | 52, 74 | 8d | 0d | Santiago Panizza | 64h |
| 89 | 1.7.6.1.2 | Puebas módulo "Profesionales" | 2d | 2014-10-02 | 2014-10-03 | 88 | 8d | 0d | Nicolas Chaikh | 16h |
| 90 | 1.7.6.1.3 | Corrección módulo "Profesionales" | 4d | 2014-10-11 | 2014-10-15 | 89 | 8d | 0d | Santiago Panizza | 32h |
| 91 | 1.7.6.1.4 | Implementación | 2d | 2014-10-16 | 2014-10-17 | 90 | 8d |  | Leonardo Oneto | 16h |
| 92 | 1.7.6.2 | **Consulta “Ministerios”** | 18d | 2014-09-23 | 2014-10-13 |  | 12d |  |  | 128h |
| 93 | 1.7.6.2.1 | Desarrollo módulo "Ministerios" | 8d | 2014-09-23 | 2014-10-01 | 52, 74 | 12d | 0d | Lucas Roca | 64h |
| 94 | 1.7.6.2.2 | Pruebas módulo "Ministerios" | 2d | 2014-10-04 | 2014-10-06 | 93 | 12d | 0d | Nicolas Chaikh | 16h |
| 95 | 1.7.6.2.3 | Corrección módulo "Ministerios" | 4d | 2014-10-07 | 2014-10-10 | 94 | 12d | 0d | Lucas Roca | 32h |
| 96 | 1.7.6.2.4 | Implementación | 2d | 2014-10-11 | 2014-10-13 | 95 | 12d |  | Leonardo Oneto | 16h |
| 97 | 1.7.6.3 | **Consulta “Instituciones Formadoras”** | 18d | 2014-10-02 | 2014-10-22 |  | 4d |  |  | 128h |
| 98 | 1.7.6.3.1 | Desarrollo módulo "Instituciones Formadoras" | 8d | 2014-10-02 | 2014-10-10 | 52, 74 | 5d | 0d | Santiago Panizza | 64h |
| 99 | 1.7.6.3.2 | Pruebas módulo "Instituciones Formadoras" | 2d | 2014-10-11 | 2014-10-13 | 98 | 5d | 0d | Nicolas Chaikh | 16h |
| 100 | 1.7.6.3.3 | Corrección módulo "Instituciones Formadoras" | 4d | 2014-10-16 | 2014-10-20 | 99 | 4d | 0d | Santiago Panizza | 32h |
| 101 | 1.7.6.3.4 | Implementación | 2d | 2014-10-21 | 2014-10-22 | 100 | 4d |  | Leonardo Oneto | 16h |
| 102 | 1.7.7 | **Prototipo Funcional PF04** | 18d | 2014-10-23 | 2014-11-12 |  | 4d | 0d |  | 384h |
| 103 | 1.7.7.1 | **Consulta “Farmacias”.** | 12d | 2014-10-23 | 2014-11-05 |  | 5d |  |  | 96h |
| 104 | 1.7.7.1.1 | Desarrollo módulo "Farmacias" | 5d | 2014-10-23 | 2014-10-28 | 52, 86 | 5d | 0d | Leonardo Oneto | 40h |
| 105 | 1.7.7.1.2 | Pruebas módulo "Farmacias" | 2d | 2014-10-29 | 2014-10-30 | 104 | 5d | 0d | Nicolas Chaikh | 16h |
| 106 | 1.7.7.1.3 | Corrección módulo "Farmacias" | 3d | 2014-10-31 | 2014-11-03 | 105 | 5d | 0d | Leonardo Oneto | 24h |
| 107 | 1.7.7.1.4 | Implementación | 2d | 2014-11-04 | 2014-11-05 | 106 | 12d |  | Leonardo Oneto | 16h |
| 108 | 1.7.7.2 | **Consulta "Droguerias"** | 18d | 2014-10-23 | 2014-11-12 |  | 6d |  |  | 96h |
| 109 | 1.7.7.2.1 | Desarrollo módulo "Droguerias" | 5d | 2014-10-23 | 2014-10-28 | 52, 86 | 6d | 0d | Nicolas Chaikh | 40h |
| 110 | 1.7.7.2.2 | Pruebas módulo "Droguerias" | 2d | 2014-10-29 | 2014-10-30 | 109 | 6d | 0d | Sebastian Palotte | 16h |
| 111 | 1.7.7.2.3 | Corrección módulo "Droguerias" | 3d | 2014-11-07 | 2014-11-10 | 110 | 6d | 0d | Sebastian Palotte | 24h |
| 112 | 1.7.7.2.4 | Implementación | 2d | 2014-11-11 | 2014-11-12 | 111 | 6d |  | Santiago Panizza | 16h |

| ID | WBS | Task | Duration | Start | Finish | Predecessors | Total slack | Free slack | Resources | Work |
| --- | --- | --- | --- | --- | --- | --- | --- | --- | --- | --- |
| 113 | 1.7.7.3 | **Consulta “Autoridades y referentes”** | 14d | 2014-10-23 | 2014-11-07 |  | 5d |  |  | 96h |
| 114 | 1.7.7.3.1 | Desarrollo módulo "Autoridades y referentes" | 5d | 2014-10-23 | 2014-10-28 | 52, 86 | 5d | 0d | Lucas Roca | 40h |
| 115 | 1.7.7.3.2 | Pruebas módulo "Autoridades y referentes" | 2d | 2014-10-29 | 2014-10-30 | 114 | 5d | 0d | Santiago Panizza | 16h |
| 116 | 1.7.7.3.3 | Corrección módulo "Autoridades y referentes" | 3d | 2014-10-31 | 2014-11-03 | 115 | 5d | 0d | Lucas Roca | 24h |
| 117 | 1.7.7.3.4 | Implementación | 2d | 2014-11-06 | 2014-11-07 | 116 | 10d |  | Leonardo Oneto | 16h |
| 118 | 1.7.7.4 | **Consulta “Noticias”** | 14d | 2014-10-23 | 2014-11-07 |  | 4d |  |  | 96h |
| 119 | 1.7.7.4.1 | Desarrollo módulo "Noticias" | 5d | 2014-10-23 | 2014-10-28 | 52, 86 | 4d | 0d | Sebastian Palotte | 40h |
| 120 | 1.7.7.4.2 | Pruebas módulo "Noticias" | 2d | 2014-10-31 | 2014-11-01 | 119 | 3d | 0d | Nicolas Chaikh | 16h |
| 121 | 1.7.7.4.3 | Corrección módulo "Noticas" | 3d | 2014-11-03 | 2014-11-05 | 120 | 3d | 0d | Sebastian Palotte | 24h |
| 122 | 1.7.7.4.4 | Implementación | 2d | 2014-11-06 | 2014-11-07 | 121 | 10d |  | Lucas Roca | 16h |
| 123 | 1.7.8 | **Aplicación versión final PhoneGap** | 5d | 2014-11-13 | 2014-11-18 |  | 6d |  |  | 80h |
| 124 | 1.7.8.1 | Aplicación Android | 5d | 2014-11-13 | 2014-11-18 | 62, 74, 86, 102 | 6d |  | Leonardo Oneto | 40h |
| 125 | 1.7.8.2 | Aplicación Windows Phone | 5d | 2014-11-13 | 2014-11-18 | 62, 74, 86, 102 | 6d |  | Lucas Roca | 40h |
| 126 | 1.8 | **Informe de Resultados de Testing** | 69d | 2014-08-19 | 2014-11-06 |  | 3d |  |  | 64h |
| 127 | 1.8.1 | **Informe de resultado** | 66d | 2014-08-19 | 2014-11-03 |  | 6d |  |  | 32h |
| 128 | 1.8.1.1 | Recopilar resultados de pruebas de PF01 | 1d | 2014-08-19 | 2014-08-19 | 71, 65 | 71d |  | Nicolas Chaikh | 8h |
| 129 | 1.8.1.2 | Recopilar resultados de pruebas de PF02 | 1d | 2014-09-10 | 2014-09-10 | 77 | 52d |  | Nicolas Chaikh | 8h |
| 130 | 1.8.1.3 | Recopilar resultados de pruebas de PF03 | 1d | 2014-10-14 | 2014-10-14 | 89, 94, 99 | 23d |  | Nicolas Chaikh | 8h |
| 131 | 1.8.1.4 | Recopilar resultados de pruebas de PF04 | 1d | 2014-11-03 | 2014-11-03 | 105, 115, 120 | 6d |  | Nicolas Chaikh | 8h |
| 132 | 1.8.2 | **Informe de correcciones realizadas** | 64d | 2014-08-25 | 2014-11-06 |  | 3d |  |  | 32h |
| 133 | 1.8.2.1 | Documentar correcciones hechas a PF01 | 1d | 2014-08-25 | 2014-08-25 | 72, 66 | 66d |  | Sebastian Palotte | 8h |
| 134 | 1.8.2.2 | Documentar correcciones hechas a PF02 | 1d | 2014-09-15 | 2014-09-15 | 78 | 48d |  | Sebastian Palotte | 8h |
| 135 | 1.8.2.3 | Documentar correcciones hechas a PF03 | 1d | 2014-10-21 | 2014-10-21 | 90, 95, 100 | 17d |  | Sebastian Palotte | 8h |
| 136 | 1.8.2.4 | Documentar correcciones hechas a PF04 | 1d | 2014-11-06 | 2014-11-06 | 106, 116, 121 | 3d |  | Sebastian Palotte | 8h |

| ID | WBS | Task | Duration | Start | Finish | Predecessors | Total slack | Resources | Work |
| --- | --- | --- | --- | --- | --- | --- | --- | --- | --- |
| 137 | 1.9 | **Implementación** | 10d | 2014-11-11 | 2014-11-21 | 126 | 0d |  | 60h |
| 138 | 1.9.1 | Presentación FINAL | 5d | 2014-11-11 | 2014-11-15 |  | 5d | Sebastian Palotte [50%] | 20h |
| 139 | 1.9.2 | Manual de usuario | 10d | 2014-11-11 | 2014-11-21 |  | 0d | Sebastian Palotte [50%] | 40h |
| 140 | 1.10 | **Informe de Cierre** | 3d | 2014-11-22 | 2014-11-25 | 137 | 0d |  | 20h |
| 141 | 1.10.1 | Lecciones aprendidas | 3d | 2014-11-22 | 2014-11-25 |  | 0d | Sebastian Palotte [50%] | 12h |
| 142 | 1.10.2 | Documento General del proyecto | 2d | 2014-11-22 | 2014-11-24 |  | 1d | Sebastian Palotte [50%] | 8h |
